# empatia_gamt_consultores_cronograma

How a schedule from MS Project changed from version to version. A marks actual dates.

## Version 1 (saved 2012-06-06)

Note of the change: Agregado de los sig docs: EDT-Empatia: terminado a 05/06/2012 empatia_gamt_consultores_cronograma a 05/06/2012 FALTA VALIDACION RAM TERMINADA

| ID | WBS | Task | Duration | Start | Finish | Predecessors | Complete | Total float | Constraint |
| --- | --- | --- | --- | --- | --- | --- | --- | --- | --- |
| 1 | 1 | **Empatía Gantt Consultores** | 62d | 2012-05-14 A | 2012-08-07 |  | 4% | 0d |  |
| 2 | 1.1 | **INICIACIÓN** | 4d | 2012-05-14 A | 2012-05-18 |  |  | 0d |  |
| 3 |  | proyecto chárter | 0d | 2012-05-14 | 2012-05-14 |  |  |  | start no earlier than 2012-05-14 |
| 4 |  | registro de stakeholders | 0d | 2012-05-15 | 2012-05-15 |  |  |  | start no earlier than 2012-05-15 |
| 5 |  | descripción de la problemática | 0d | 2012-05-15 A | 2012-05-15 A | 3 | 100% |  | finish no earlier than 2012-05-24 |
| 6 |  | propósito del proyecto | 0d | 2012-05-16 A | 2012-05-16 A | 3, 5 | 100% |  | finish no earlier than 2012-05-24 |
| 7 |  | alcance del proyecto | 0d | 2012-05-17 A | 2012-05-17 A | 6 | 100% |  | finish no earlier than 2012-05-24 |
| 8 |  | viabilidad | 0d | 2012-05-18 | 2012-05-18 | 3, 4, 5, 6, 7 |  |  | start no earlier than 2012-05-18 |
| 9 | 1.2 | **PLANIFICIACIÓN** | 6d | 2012-05-15 A | 2012-05-23 |  |  | 0d |  |
| 10 |  | Estructura de descomposición de trabajo | 0d | 2012-05-15 A | 2012-05-15 A | 5, 7 | 100% |  |  |
| 11 |  | plan de gestión de proyecto | 0d | 2012-05-17 | 2012-05-17 | 3, 4, 7 |  |  | start no earlier than 2012-05-17 |
| 12 |  | cronograma de proyecto | 0d | 2012-05-18 A | 2012-05-18 | 10, 11 | 99% |  |  |
| 13 |  | descripción de roles | 0d | 2012-05-15 | 2012-05-15 | 10 |  |  |  |
| 14 |  | RAM | 0d | 2012-05-16 | 2012-05-16 | 10, 13 |  |  |  |
| 15 |  | evaluación cualitativa y cuantitativa de riesgos | 0d | 2012-05-22 | 2012-05-22 |  |  |  |  |
| 16 |  | plan de respuesta a riesgos | 0d | 2012-05-23 | 2012-05-23 | 15 |  |  |  |
| 17 |  | plan de gestión de adquisiciones | 0d | 2012-05-16 | 2012-05-16 | 10 |  |  |  |
| 18 |  | plan de comunicaciones | 1d | 2012-05-15 | 2012-05-15 | 4 |  |  |  |
| 19 |  | ruta critica | 1d | 2012-05-18 | 2012-05-18 | 12 |  |  |  |
| 20 | 1.3 | **EJECUCIÓN** | 8d | 2012-05-23 A | 2012-06-01 |  | 50% | 0d |  |
| 21 |  | informe de performance | 2d | 2012-05-23 | 2012-05-24 |  |  |  |  |
| 22 |  | documento de requerimientos | 2d | 2012-05-25 A | 2012-06-01 A | 27 | 100% |  |  |
| 23 | 1.4 | **CONTROL** | 3d | 2012-06-01 | 2012-06-05 |  |  | 0d |  |
| 24 |  | diagrama de Gantt | 2d | 2012-06-01 | 2012-06-04 | 10 |  |  |  |
| 25 |  | informe de monitoreo de riesgos | 2d | 2012-06-04 | 2012-06-05 |  |  |  |  |
| 26 | 1.5 | **ANÁLISIS Y DISEÑO** | 9d | 2012-06-06 A | 2012-06-19 |  | 17% | 0d |  |
| 27 | 1.5.1 | **gestión de requerimientos** | 4d | 2012-06-06 A | 2012-06-11 |  | 50% | 0d |  |
| 28 |  | entrevistas con el cliente | 2d | 2012-06-06 A | 2012-06-07 A |  | 100% |  |  |
| 29 |  | listado de requerimientos | 2d | 2012-06-08 | 2012-06-11 | 28 |  |  |  |
| 30 | 1.5.2 | **diseño orientado a objetos** | 5d | 2012-06-12 | 2012-06-18 |  |  | 0d |  |
| 31 |  | diagrama de secuencia | 1d | 2012-06-18 | 2012-06-18 | 29, 33, 32 |  |  |  |
| 32 |  | diagrama de clases | 2d | 2012-06-12 | 2012-06-13 | 29, 33 |  |  |  |
| 33 |  | diagrama de caso de usos | 1d | 2012-06-12 | 2012-06-12 | 29 |  |  |  |
| 34 | 1.5.3 | **diseño de datos** | 6d | 2012-06-11 | 2012-06-19 |  |  | 0d |  |
| 35 |  | diagrama entidad-relación | 3d | 2012-06-11 | 2012-06-14 | 29 |  |  |  |
| 36 |  | modelo relacional | 1d | 2012-06-18 | 2012-06-18 | 35 |  |  |  |
| 37 |  | script SQL | 0d | 2012-06-19 | 2012-06-19 | 36 |  |  |  |
| 38 | 1.6 | **DESARROLLO** | 36d | 2012-06-19 | 2012-08-07 | 30, 34 |  | 0d |  |
| 39 | 1.6.1 | **desarrollo de clases** | 13d | 2012-06-19 | 2012-07-05 |  |  | 23d |  |
| 40 |  | clase de conexión | 2d | 2012-06-22 | 2012-07-05 |  |  | 18d | start no earlier than 2012-06-22 |
| 41 |  | clase_participante | 3d | 2012-06-19 | 2012-06-21 |  |  | 28d | start no earlier than 2012-06-18 |
| 42 |  | clase_generaRecomendación | 3d | 2012-06-19 | 2012-06-21 |  |  | 28d | start no earlier than 2012-06-19 |
| 43 |  | clase_servicios | 3d | 2012-06-22 | 2012-06-26 |  |  | 25d | start no earlier than 2012-06-22 |
| 44 |  | clase _asesores | 3d | 2012-06-27 | 2012-06-29 |  |  | 22d | start no earlier than 2012-06-27 |
| 45 |  | clase_alumnos | 3d | 2012-07-02 | 2012-07-04 |  |  | 19d | start no earlier than 2012-07-02 |
| 46 |  | clase_factración | 3d | 2012-06-25 | 2012-06-27 |  |  | 24d | start no earlier than 2012-06-25 |
| 47 |  | clase_control_nutrimental | 3d | 2012-06-28 | 2012-07-02 |  |  | 21d | start no earlier than 2012-06-28 |
| 48 |  | clase_fechas_importantes | 3d | 2012-07-03 | 2012-07-05 |  |  | 18d | start no earlier than 2012-07-03 |
| 49 | 1.6.2 | **desarrollo GUI** | 30d | 2012-06-27 | 2012-08-07 |  |  | 0d |  |
| 50 |  | pantalla principal | 3d | 2012-06-27 | 2012-06-29 |  |  | 0d | start no earlier than 2012-06-27 |
| 51 |  | pantalla principal del administrador | 3d | 2012-07-02 | 2012-07-04 | 50 |  | 0d |  |
| 52 |  | datos de participante | 3d | 2012-07-05 | 2012-07-09 | 51 |  | 0d |  |
| 53 |  | generador de cartas de recomendación | 3d | 2012-07-10 | 2012-07-12 | 52 |  | 0d |  |
| 54 |  | catalogo de servicios | 3d | 2012-07-13 | 2012-07-17 | 53 |  | 0d |  |
| 55 |  | catálogo de asesores | 3d | 2012-07-18 | 2012-07-20 | 54 |  | 0d | start no earlier than 2012-07-16 |
| 56 |  | catalogo de alumnos | 3d | 2012-07-23 | 2012-07-25 | 55 |  | 0d |  |
| 57 |  | pantalla de información de facturación | 3d | 2012-07-26 | 2012-07-30 | 56 |  | 0d |  |
| 58 |  | control nutrimental del participante | 3d | 2012-07-31 | 2012-08-02 | 57 |  | 0d |  |
| 59 |  | listado de fechas importantes | 3d | 2012-08-03 | 2012-08-07 | 58 |  | 0d |  |
| 60 | 1.7 | **PRUEBAS** | 3d | 2012-05-29 | 2012-05-31 |  |  | 48d |  |
| 61 |  | pruebas de validación | 3d | 2012-05-29 | 2012-05-31 |  |  | 43d | start no earlier than 2012-05-29 |
| 62 |  | pruebas de requerimientos | 2d | 2012-05-30 | 2012-05-31 |  |  | 43d | start no earlier than 2012-05-30 |
| 63 | 1.8 | **IMPLEMENTACIÓN** | 32d | 2012-05-30 | 2012-07-12 |  |  | 18d |  |
| 64 |  | plan de implementación | 4d | 2012-07-09 | 2012-07-12 |  |  | 18d | start no earlier than 2012-07-09 |
| 65 |  | manual de usuario | 3d | 2012-05-30 | 2012-07-09 |  |  | 21d | start no earlier than 2012-05-30 |

## Version 2 (saved 2012-06-06)

Note of the change: terminacion de empatia_gamt_consultores_cronograma.mpp con colaboracion de jared bustaante

Last finish 2012-08-07 → 2012-08-09 (+2d).

Added:

| ID | Task | Duration | Start | Finish | Resources |
| --- | --- | --- | --- | --- | --- |
| 60 | **Programacion de GUI** | 19d | 2012-06-19 | 2012-07-16 |  |
| 61 | prog. pantalla principal | 2d | 2012-07-02 | 2012-07-03 | Jared Bustamante |
| 62 | prog.pantalla principal del administrador | 2d | 2012-06-29 | 2012-07-02 | José Rodolfo Sánchez |
| 63 | prog.datos de participante | 2d | 2012-07-12 | 2012-07-13 | José Juan Duarte |
| 64 | prog.generador de cartas de recomendación | 2d | 2012-07-04 | 2012-07-05 | Jared Bustamante |
| 65 | prog.catalogo de servicios | 2d | 2012-08-01 | 2012-08-02 | José Juan Duarte |
| 66 | prog.catálogo de asesores | 2d | 2012-07-06 | 2012-07-09 | Jared Bustamante |
| 67 | prog.catalogo de alumnos | 2d | 2012-07-09 | 2012-07-10 | José Rodolfo Sánchez |
| 68 | prog.pantalla de información de facturación | 2d | 2012-07-03 | 2012-07-04 | José Rodolfo Sánchez |
| 69 | prog.control nutrimental del participante | 2d | 2012-07-30 | 2012-07-31 | José Juan Duarte |
| 70 | prog.listado de fechas importantes | 2d | 2012-07-05 | 2012-07-06 | José Rodolfo Sánchez |

Changed:

| ID | Task | Start | Finish | Duration | Complete | Total float | Predecessors | Other |
| --- | --- | --- | --- | --- | --- | --- | --- | --- |
| 1 | **Empatía Gantt Consultores** |  | 2012-08-07 → 2012-07-16 (-22d) | 62d → 45d |  | 0d → none |  |  |
| 9 | **PLANIFICIACIÓN** |  | 2012-05-23 → 2012-05-28 (+5d) | 6d → 10d |  | 0d → none |  |  |
| 18 | plan de comunicaciones | 2012-05-15 → 2012-05-28 (+13d) | 2012-05-15 → 2012-05-28 (+13d) |  |  |  |  | resources José Juan Duarte → Jared Bustamante |
| 19 | ruta critica | 2012-05-18 → 2012-05-28 (+10d) | 2012-05-18 → 2012-05-28 (+10d) |  |  |  |  |  |
| 20 | **EJECUCIÓN** | 2012-05-23 A → 2012-05-25 A (+2d) |  | 8d → 6d |  | 0d → none |  |  |
| 21 | informe de performance | 2012-05-23 → 2012-05-28 (+5d) | 2012-05-24 → 2012-05-29 (+5d) |  |  |  |  | resources José Rodolfo Sánchez → José Juan Duarte |
| 23 | **CONTROL** | 2012-06-01 → 2012-05-31 (-1d) |  | 3d → 4d |  | 0d → none |  |  |
| 24 | diagrama de Gantt | 2012-06-01 → 2012-05-31 (-1d) | 2012-06-04 → 2012-06-01 (-3d) |  |  |  |  | resources Jared Bustamante → José Juan Duarte |
| 26 | **ANÁLISIS Y DISEÑO** |  | 2012-06-19 → 2012-06-18 (-1d) |  | 17% → 14% | 0d → none |  |  |
| 27 | **gestión de requerimientos** |  | 2012-06-11 → 2012-06-08 (-3d) | 4d → 3d | 50% → 67% | 0d → none |  |  |
| 29 | listado de requerimientos |  | 2012-06-11 → 2012-06-08 (-3d) | 2d → 1d |  |  |  |  |
| 30 | **diseño orientado a objetos** | 2012-06-12 → 2012-06-11 (-1d) |  | 5d → 6d |  | 0d → none |  |  |
| 31 | diagrama de secuencia | 2012-06-18 → 2012-06-14 (-4d) |  | 1d → 3d |  |  |  | constraint none → start no earlier than 2012-06-13; resources José Juan Duarte → José Rodolfo Sánchez [50%]; Jared Bustamante [50%] |
| 32 | diagrama de clases |  |  |  |  |  |  | constraint none → start no earlier than 2012-06-13; resources José Rodolfo Sánchez → Jared Bustamante |
| 33 | diagrama de caso de usos | 2012-06-12 → 2012-06-11 (-1d) |  | 1d → 2d |  |  |  | constraint none → start no earlier than 2012-06-06; resources Jared Bustamante → José Juan Duarte |
| 34 | **diseño de datos** |  | 2012-06-19 → 2012-06-13 (-6d) | 6d → 3d |  | 0d → none |  |  |
| 35 | diagrama entidad-relación |  | 2012-06-14 → 2012-06-13 (-1d) |  |  |  |  | constraint none → start no earlier than 2012-06-12; resources Jared Bustamante; José Rodolfo Sánchez → José Rodolfo Sánchez |
| 36 | modelo relacional | 2012-06-18 → 2012-06-11 (-7d) | 2012-06-18 → 2012-06-11 (-7d) |  |  |  | 35 → none | constraint none → start no earlier than 2012-06-11; resources José Rodolfo Sánchez → Jared Bustamante |
| 37 | script SQL | 2012-06-19 → 2012-06-12 (-7d) | 2012-06-19 → 2012-06-12 (-7d) |  |  |  |  |  |
| 38 | **DESARROLLO** | 2012-06-19 → 2012-06-13 (-6d) | 2012-08-07 → 2012-07-16 (-22d) | 36d → 23d |  | 0d → none |  |  |
| 39 | **desarrollo de clases** |  | 2012-07-05 → 2012-06-29 (-6d) | 13d → 9d |  | 23d → none |  |  |
| 40 | clase de conexión | 2012-06-22 → 2012-06-21 (-1d) | 2012-07-05 → 2012-06-21 (-14d) | 2d → 1d |  | 18d → none |  | constraint start no earlier than 2012-06-22 → start no earlier than 2012-06-20; resources Jared Bustamante; José Rodolfo Sánchez → Jared Bustamante |
| 41 | clase_participante |  | 2012-06-21 → 2012-06-20 (-1d) | 3d → 2d |  | 28d → none |  | constraint start no earlier than 2012-06-18 → start no earlier than 2012-06-19 |
| 42 | clase_generaRecomendación |  | 2012-06-21 → 2012-06-20 (-1d) | 3d → 2d |  | 28d → none |  | constraint start no earlier than 2012-06-19 → start no earlier than 2012-06-20 |
| 43 | clase_servicios | 2012-06-22 → 2012-06-21 (-1d) | 2012-06-26 → 2012-06-22 (-4d) | 3d → 2d |  | 25d → none |  | constraint start no earlier than 2012-06-22 → start no earlier than 2012-06-26 |
| 44 | clase _asesores | 2012-06-27 → 2012-06-25 (-2d) | 2012-06-29 → 2012-06-26 (-3d) | 3d → 2d |  | 22d → none |  | constraint start no earlier than 2012-06-27 → start no earlier than 2012-06-29 |
| 45 | clase_alumnos | 2012-07-02 → 2012-06-27 (-5d) | 2012-07-04 → 2012-06-28 (-6d) | 3d → 2d |  | 19d → none |  | constraint start no earlier than 2012-07-02 → start no earlier than 2012-07-04 |
| 46 | clase_factración | 2012-06-25 → 2012-06-22 (-3d) | 2012-06-27 → 2012-06-25 (-2d) | 3d → 2d |  | 24d → none |  |  |
| 47 | clase_control_nutrimental | 2012-06-28 → 2012-06-26 (-2d) | 2012-07-02 → 2012-06-27 (-5d) | 3d → 2d |  | 21d → none |  | constraint start no earlier than 2012-06-28 → start no earlier than 2012-06-27 |
| 48 | clase_fechas_importantes | 2012-07-03 → 2012-06-28 (-5d) | 2012-07-05 → 2012-06-29 (-6d) | 3d → 2d |  | 18d → none |  | constraint start no earlier than 2012-07-03 → start no earlier than 2012-06-29 |
| 49 | **desarrollo GUI** | 2012-06-27 → 2012-06-13 (-14d) | 2012-08-07 → 2012-07-11 (-27d) | 30d → 21d |  | 0d → none |  |  |
| 50 | pantalla principal | 2012-06-27 → 2012-06-13 (-14d) | 2012-06-29 → 2012-06-15 (-14d) |  |  | 0d → none |  | constraint start no earlier than 2012-06-27 → start no earlier than 2012-06-06 |
| 51 | pantalla principal del administrador | 2012-07-02 → 2012-06-18 (-14d) | 2012-07-04 → 2012-06-19 (-15d) | 3d → 2d |  | 0d → none |  |  |
| 52 | datos de participante | 2012-07-05 → 2012-06-20 (-15d) | 2012-07-09 → 2012-06-21 (-18d) | 3d → 2d |  | 0d → none |  |  |
| 53 | generador de cartas de recomendación | 2012-07-10 → 2012-06-22 (-18d) | 2012-07-12 → 2012-06-25 (-17d) | 3d → 2d |  | 0d → none |  |  |
| 54 | catalogo de servicios | 2012-07-13 → 2012-06-26 (-17d) | 2012-07-17 → 2012-06-27 (-20d) | 3d → 2d |  | 0d → none |  |  |
| 55 | catálogo de asesores | 2012-07-18 → 2012-06-28 (-20d) | 2012-07-20 → 2012-06-29 (-21d) | 3d → 2d |  | 0d → none |  | constraint start no earlier than 2012-07-16 → start no earlier than 2012-07-10 |
| 56 | catalogo de alumnos | 2012-07-23 → 2012-07-02 (-21d) | 2012-07-25 → 2012-07-03 (-22d) | 3d → 2d |  | 0d → none |  |  |
| 57 | pantalla de información de facturación | 2012-07-26 → 2012-07-04 (-22d) | 2012-07-30 → 2012-07-05 (-25d) | 3d → 2d |  | 0d → none |  |  |
| 58 | control nutrimental del participante | 2012-07-31 → 2012-07-06 (-25d) | 2012-08-02 → 2012-07-09 (-24d) | 3d → 2d |  | 0d → none |  |  |
| 59 | listado de fechas importantes | 2012-08-03 → 2012-07-10 (-24d) | 2012-08-07 → 2012-07-11 (-27d) | 3d → 2d |  | 0d → none |  |  |
| 71 | **PRUEBAS** | 2012-05-29 → 2012-07-04 (+36d) | 2012-05-31 → 2012-07-12 (+42d) | 3d → 7d |  | 48d → none |  |  |
| 72 | pruebas de validación | 2012-05-29 → 2012-08-07 (+70d) | 2012-05-31 → 2012-08-09 (+70d) |  |  | 43d → none |  | constraint start no earlier than 2012-05-29 → start no earlier than 2012-07-10; resources José Rodolfo Sánchez → José Rodolfo Sánchez [33%]; Jared Bustamante [33%]; José Juan Duarte [33%] |
| 73 | pruebas de requerimientos | 2012-05-30 → 2012-08-03 (+65d) | 2012-05-31 → 2012-08-06 (+67d) |  |  | 43d → none |  |  |
| 74 | **IMPLEMENTACIÓN** | 2012-05-30 → 2012-06-19 (+20d) | 2012-07-12 → 2012-07-16 (+4d) | 32d → 19d |  | 18d → none |  |  |
| 75 | plan de implementación | 2012-07-09 → 2012-07-30 (+21d) | 2012-07-12 → 2012-08-02 (+21d) |  |  | 18d → none |  | resources José Rodolfo Sánchez → Jared Bustamante |
| 76 | manual de usuario | 2012-05-30 → 2012-06-19 (+20d) | 2012-07-09 → 2012-07-12 (+3d) |  |  | 21d → none |  | resources Jared Bustamante; José Juan Duarte; José Rodolfo Sánchez → Jared Bustamante; José Rodolfo Sánchez |

## Version 3 (saved 2012-06-06)

Note of the change: empatia_gamt_consultores_cronograma.mpp (falta costos) empatia_gamt_consultores_cronograma.pdf(Ruta critica)

Last finish 2012-08-09 → 2012-08-07 (-2d).

Changed:

| ID | Task | Start | Finish | Duration | Other |
| --- | --- | --- | --- | --- | --- |
| 1 | **Empatía Gantt Consultores** |  |  | 45d → 46d |  |
| 38 | **DESARROLLO** |  |  | 23d → 24d |  |
| 60 | **Programacion de GUI** |  |  | 19d → 20d |  |
| 65 | prog.catalogo de servicios | 2012-08-01 → 2012-07-30 (-2d) | 2012-08-02 → 2012-07-31 (-2d) |  | resources José Juan Duarte → Jared Bustamante |
| 72 | pruebas de validación | 2012-08-07 → 2012-08-03 (-4d) | 2012-08-09 → 2012-08-07 (-2d) |  |  |
| 73 | pruebas de requerimientos | 2012-08-03 → 2012-08-01 (-2d) | 2012-08-06 → 2012-08-02 (-4d) |  |  |
| 74 | **IMPLEMENTACIÓN** |  |  | 19d → 20d |  |
| 75 | plan de implementación | 2012-07-30 → 2012-07-10 (-20d) | 2012-08-02 → 2012-07-13 (-20d) |  |  |
| 76 | manual de usuario |  | 2012-07-12 → 2012-07-13 (+1d) |  | resources Jared Bustamante; José Rodolfo Sánchez → José Rodolfo Sánchez |

## Version 4 (saved 2012-06-07)

Last finish stays 2012-08-07. Complete tasks 6 → 2.

Changed:

| ID | Task | Start | Finish | Duration | Complete | Other |
| --- | --- | --- | --- | --- | --- | --- |
| 3 | proyecto chárter |  |  | 0d → 1d |  |  |
| 4 | registro de stakeholders |  |  | 0d → 1d |  |  |
| 5 | descripción de la problemática |  | 2012-05-15 A → 2012-05-18 (+3d) | 0d → 2d | 100% → 0% |  |
| 6 | propósito del proyecto |  | 2012-05-16 A → 2012-05-17 (+1d) | 0d → 2d | 100% → 0% | resources Jared Bustamante; José Rodolfo Sánchez → Jared Bustamante; José Rodolfo Sánchez; José Juan Duarte |
| 7 | alcance del proyecto |  | 2012-05-17 A → 2012-05-17 | 0d → 1d | 100% → 0% |  |
| 8 | viabilidad |  |  | 0d → 1d |  |  |
| 10 | Estructura de descomposición de trabajo |  | 2012-05-15 A → 2012-05-21 (+6d) | 0d → 1d | 100% → 0% |  |
| 11 | plan de gestión de proyecto |  |  | 0d → 1d |  |  |
| 12 | cronograma de proyecto |  |  | 0d → 1d | 99% → 0% |  |
| 13 | descripción de roles |  |  | 0d → 1d |  |  |
| 14 | RAM |  |  | 0d → 1d |  |  |
| 15 | evaluación cualitativa y cuantitativa de riesgos |  |  | 0d → 1d |  |  |
| 16 | plan de respuesta a riesgos |  |  | 0d → 1d |  |  |
| 17 | plan de gestión de adquisiciones |  |  | 0d → 1d |  |  |
| 26 | **ANÁLISIS Y DISEÑO** |  |  |  | 14% → 13% |  |
| 33 | diagrama de caso de usos | 2012-06-11 → 2012-06-08 (-3d) | 2012-06-12 → 2012-06-11 (-1d) |  |  |  |
| 37 | script SQL | 2012-06-12 → 2012-06-15 (+3d) | 2012-06-12 → 2012-06-15 (+3d) | 0d → 1d |  | resources Jared Bustamante → José Juan Duarte |
| 50 | pantalla principal | 2012-06-13 → 2012-06-12 (-1d) | 2012-06-15 → 2012-06-14 (-1d) |  |  |  |

## Version 5 (saved 2012-06-07)

Last finish stays 2012-08-07. Complete tasks 2 → 12.

Changed:

| ID | Task | Start | Finish | Complete | Other |
| --- | --- | --- | --- | --- | --- |
| 1 | **Empatía Gantt Consultores** |  |  | 4% → 15% |  |
| 2 | **INICIACIÓN** |  |  | 0% → 75% |  |
| 4 | registro de stakeholders | 2012-05-15 A | 2012-05-15 A | 0% → 100% |  |
| 5 | descripción de la problemática |  | 2012-05-18 A | 0% → 100% |  |
| 6 | propósito del proyecto |  | 2012-05-17 A | 0% → 100% |  |
| 7 | alcance del proyecto |  | 2012-05-17 A | 0% → 100% |  |
| 9 | **PLANIFICIACIÓN** |  |  | 0% → 50% |  |
| 10 | Estructura de descomposición de trabajo |  | 2012-05-21 A | 0% → 100% |  |
| 12 | cronograma de proyecto |  | 2012-05-18 A | 0% → 100% |  |
| 13 | descripción de roles | 2012-05-15 A | 2012-05-15 A | 0% → 100% |  |
| 14 | RAM | 2012-05-16 A | 2012-05-16 A | 0% → 100% |  |
| 19 | ruta crítica | 2012-05-28 A | 2012-05-28 A | 0% → 100% | was named ruta critica |
| 23 | **CONTROL** | 2012-05-31 A |  | 0% → 50% |  |
| 24 | diagrama de Gantt | 2012-05-31 A | 2012-06-01 A | 0% → 100% |  |

## Version 6 (saved 2012-06-13)

Last finish stays 2012-08-07. Complete tasks 12 → 14.

Changed:

| ID | Task | Start | Finish | Complete |
| --- | --- | --- | --- | --- |
| 1 | **Empatía Gantt Consultores** |  |  | 15% → 18% |
| 2 | **INICIACIÓN** |  |  | 75% → 88% |
| 8 | viabilidad | 2012-05-18 A | 2012-05-18 A | 0% → 100% |
| 9 | **PLANIFICIACIÓN** |  |  | 50% → 65% |
| 15 | evaluación cualitativa y cuantitativa de riesgos | 2012-05-22 A |  | 0% → 50% |
| 16 | plan de respuesta a riesgos | 2012-05-23 A | 2012-05-23 A | 0% → 100% |

## Version 7 (saved 2012-06-25)

Last finish stays 2012-08-07. Complete tasks 14 → 17.

Changed:

| ID | Task | Start | Finish | Complete |
| --- | --- | --- | --- | --- |
| 1 | **Empatía Gantt Consultores** |  |  | 18% → 26% |
| 9 | **PLANIFICIACIÓN** |  |  | 65% → 75% |
| 15 | evaluación cualitativa y cuantitativa de riesgos |  | 2012-05-22 A | 50% → 100% |
| 18 | plan de comunicaciones | 2012-05-28 A |  | 0% → 50% |
| 26 | **ANÁLISIS Y DISEÑO** |  |  | 13% → 52% |
| 30 | **diseño orientado a objetos** |  |  | 0% → 21% |
| 32 | diagrama de clases | 2012-06-12 A |  | 0% → 75% |
| 34 | **diseño de datos** | 2012-06-11 A |  | 0% → 85% |
| 35 | diagrama entidad-relación | 2012-06-11 A |  | 0% → 75% |
| 36 | modelo relacional | 2012-06-11 A | 2012-06-11 A | 0% → 100% |
| 37 | script SQL | 2012-06-15 A | 2012-06-15 A | 0% → 100% |
| 38 | **DESARROLLO** |  |  | 0% → 4% |
| 49 | **desarrollo GUI** |  |  | 0% → 4% |
| 51 | pantalla principal del administrador | 2012-06-18 A |  | 0% → 25% |
| 52 | datos de participante | 2012-06-20 A |  | 0% → 12% |
| 60 | **Programacion de GUI** |  |  | 0% → 10% |
| 64 | prog.generador de cartas de recomendación | 2012-07-04 A |  | 0% → 75% |
| 70 | prog.listado de fechas importantes | 2012-07-05 A |  | 0% → 25% |
| 74 | **IMPLEMENTACIÓN** | 2012-06-19 A |  |  |
| 76 | manual de usuario | 2012-06-19 A |  |  |
